# 草海典型性水域水生态保护与修复工程(2024工期计划)

Schedule from a web Gantt chart, 2024-01-01 to 2025-01-04.
Every day is a working day

## Schedule

| ID | WBS | Task | Duration | Start | Finish | Predecessors | Status |
| --- | --- | --- | --- | --- | --- | --- | --- |
| 2 | 1 | **二、入湖河口湿地** | 362d | 2024-01-09 | 2025-01-04 |  |  |
| 3 | 1.1 | **临时场地场地建设** | 62d | 2024-01-09 | 2024-03-10 |  |  |
| 4 | 1.1.1 | 临时场地基础建设 | 25d | 2024-01-09 | 2024-02-02 |  |  |
| 5 | 1.1.2 | 临时场地设备进场及安装 | 20d | 2024-02-20 | 2024-03-10 |  |  |
| 6 | 1.2 | **生态围隔布设工程（拦鱼网布设已完成）** | 20d | 2024-05-01 | 2024-05-20 |  |  |
| 7 | 1.2.1 | 软围隔布设 | 20d | 2024-05-01 | 2024-05-20 |  |  |
| 8 | 1.3 | **鱼类种群调控工程** | 229d | 2024-05-21 | 2025-01-04 |  |  |
| 9 | 1.3.1 | 清除鱼类 | 30d | 2024-05-21 | 2024-06-19 | 7 | waiting |
| 10 | 1.3.2 | 鱼类投放（局部调控） | 10d | 2024-12-26 | 2025-01-04 | 17 | waiting |
| 11 | 1.4 | **表层浮泥清除** | 260d | 2024-03-11 | 2024-11-25 |  |  |
| 12 | 1.4.1 | 清除表层浮泥第一期 | 40d | 2024-03-11 | 2024-04-19 | 5 | waiting |
| 13 | 1.4.2 | 六个月观察期 | 180d | 2024-04-20 | 2024-10-16 | 12 | waiting |
| 14 | 1.4.3 | 清除表层浮泥第二期 | 40d | 2024-10-17 | 2024-11-25 | 13 | waiting |
| 15 | 1.5 | **水生植物恢复工程** | 250d | 2024-04-20 | 2024-12-25 |  |  |
| 16 | 1.5.1 | 沉水植物种植及补种第一期（约8.67万平方） | 60d | 2024-04-20 | 2024-06-18 | 12 | waiting |
| 17 | 1.5.2 | 沉水植物种植及补种第二期（约3.3万平方） | 30d | 2024-11-26 | 2024-12-25 | 14 | waiting |
| 18 | 2 | **三、敞水区** | 130d | 2024-05-01 | 2024-09-07 |  |  |
| 19 | 2.1 | **生态围隔布设工程** | 20d | 2024-05-01 | 2024-05-20 |  |  |
| 20 | 2.1.1 | 不透水围隔 | 20d | 2024-05-01 | 2024-05-20 |  |  |
| 21 | 2.1.2 | 拦鱼网 | 20d | 2024-05-01 | 2024-05-20 |  |  |
| 22 | 2.2 | **鱼类种群调控工程** | 110d | 2024-05-21 | 2024-09-07 |  |  |
| 23 | 2.2.1 | 清除鱼类 | 10d | 2024-05-21 | 2024-05-30 | 20, 21 | waiting |
| 24 | 2.2.2 | 鱼类投放 | 10d | 2024-08-29 | 2024-09-07 | 26 | waiting |
| 25 | 2.3 | **水生植物恢复工程** | 90d | 2024-05-31 | 2024-08-28 |  |  |
| 26 | 2.3.1 | 沉水植物种植及补种 | 90d | 2024-05-31 | 2024-08-28 | 23 | waiting |

| ID | WBS | Task | Duration | Start | Finish |
| --- | --- | --- | --- | --- | --- |
| 27 | 3 | **四、水生态监管能力建设** | 366d | 2024-01-01 | 2024-12-31 |
| 28 | 3.1 | 跟踪监测评估 | 366d | 2024-01-01 | 2024-12-31 |
| 29 | 3.2 | 测藻仪采购及安装 | 275d | 2024-04-01 | 2024-12-31 |
| 30 | 3.3 | 水生态管理能力建设报告编制 | 275d | 2024-04-01 | 2024-12-31 |
